# Projet batiment R+4

Schedule from ProjectLibre, 2026-01-01 to 2026-11-03.

## Calendars

- Standard: Mon-Fri 08:00-12:00, 13:00-17:00; Sat-Sun off.

## Resources

| Resource | Group | Rate |
| --- | --- | --- |
| Non attribué |  |  |
| Chef de chantier | 1 | 15 |
| Maçons | 2 | 13 |
| Coffreurs | 3 | 13 |
| Ferrailleurs | 4 | 13 |
| Manœuvres | 5 | 10 |
| Conducteur | 6 | 14 |
| Grutier | 7 | 15 |
| Topographe | 8 | 20 |
| Pelle mécanique | 9 | 2000 |
| Grue | 10 | 3000 |
| Rouleau compresseur | 11 | 100 |

## Schedule

| ID | WBS | Task | Duration | Start | Finish | Predecessors | Resources |
| --- | --- | --- | --- | --- | --- | --- | --- |
| 1 | 1 | **Préparation du chantier** | 10d | 2026-01-01 | 2026-01-14 |  |  |
| 2 | 1.1 | Installation de chantier | 5d | 2026-01-01 | 2026-01-07 |  | Chef de chantier; Manœuvres [200%] |
| 3 | 1.2 | Clôture + signalisation | 3d | 2026-01-08 | 2026-01-12 | 2 | Manœuvres [300%] |
| 4 | 1.3 | Implantation topographique | 2d | 2026-01-13 | 2026-01-14 | 3 | Chef de chantier; Manœuvres; Topographe |
| 6 | 2 | **Terrassement** | 12d | 2026-01-15 | 2026-01-30 | 1 |  |
| 7 | 2.1 | Décapage | 2d | 2026-01-15 | 2026-01-16 |  | Manœuvres [200%] |
| 8 | 2.2 | Fouille en pleine masse | 5d | 2026-01-19 | 2026-01-23 | 7 | Conducteur; Pelle mécanique; Manœuvres [200%] |
| 9 | 2.3 | Fouilles en rigoles | 3d | 2026-01-26 | 2026-01-28 | 8 | Maçons [300%] |
| 10 | 2.4 | Nivellement + compactage | 2d | 2026-01-29 | 2026-01-30 | 9 | Manœuvres [200%]; Rouleau compresseur |
| 12 | 3 | **Fondation** | 12d | 2026-02-02 | 2026-02-17 | 6 | Grutier; Grue |
| 13 | 3.1 | Coffrage fondations | 4d | 2026-02-02 | 2026-02-05 |  | Coffreurs [400%] |
| 14 | 3.2 | Ferraillage fondations | 4d | 2026-02-02 | 2026-02-05 |  | Ferrailleurs [400%] |
| 15 | 3.3 | Bétonnage fondations | 2d | 2026-02-06 | 2026-02-09 | 13, 14 | Grutier; Maçons [400%] |
| 16 | 3.4 | Cure béton | 6d | 2026-02-10 | 2026-02-17 | 15 |  |
| 18 | 4 | **Soubassement** | 19d | 2026-02-18 | 2026-03-16 | 12 |  |
| 19 | 4.1 | Élévation murs de soubassement | 5d | 2026-02-18 | 2026-02-24 |  | Maçons [400%] |
| 20 | 4.2 | Remblaiement périphérique | 3d | 2026-02-25 | 2026-02-27 | 19 | Manœuvres |
| 21 | 4.3 | Dallage RDC | 5d | 2026-03-02 | 2026-03-06 | 20 | Coffreurs [400%] |
| 22 | 4.4 | Cure | 6d | 2026-03-09 | 2026-03-16 | 21 |  |
| 24 | 5 | **Structure du RDC** | 26d | 2026-03-17 | 2026-04-21 | 18 | Grutier; Grue |
| 25 | 5.1 | **Poteaux** | 12d | 2026-03-17 | 2026-04-01 |  |  |
| 26 | 5.1.1 | Coffrage | 3d | 2026-03-17 | 2026-03-19 |  | Coffreurs [400%] |
| 27 | 5.1.2 | Ferraillage | 3d | 2026-03-17 | 2026-03-19 |  | Ferrailleurs [400%] |
| 28 | 5.1.3 | Bétonnage | 2d | 2026-03-20 | 2026-03-23 | 27, 26 | Manœuvres [300%]; Maçons [400%]; Grutier |
| 29 | 5.1.4 | Décoffrage+cure | 7d | 2026-03-24 | 2026-04-01 | 28 | Manœuvres [300%]; Maçons [200%] |

| ID | WBS | Task | Duration | Start | Finish | Predecessors | Resources |
| --- | --- | --- | --- | --- | --- | --- | --- |
| 31 | 5.2 | **Poutres+Dalle** | 14d | 2026-04-02 | 2026-04-21 | 25 |  |
| 32 | 5.2.1 | Coffrage | 5d | 2026-04-02 | 2026-04-08 |  | Coffreurs [400%] |
| 33 | 5.2.2 | Ferraillage | 5d | 2026-04-02 | 2026-04-08 |  | Ferrailleurs [400%] |
| 34 | 5.2.3 | Bétonnage | 2d | 2026-04-09 | 2026-04-10 | 33, 32 | Maçons [600%]; Manœuvres [300%] |
| 35 | 5.2.4 | Décoffrage+cure | 4d | 2026-04-13 | 2026-04-16 | 34 | Maçons [300%]; Manœuvres [300%] |
| 37 | 5.2.5 | Cage d’escalier | 3d | 2026-04-17 | 2026-04-21 | 35 | Maçons [200%]; Coffreurs [200%]; Ferrailleurs [300%]; Manœuvres [200%] |
| 39 | 6 | **Structure du 1ere etage** | 29d | 2026-04-22 | 2026-06-01 | 24 | Grutier; Grue |
| 40 | 6.1 | **Poteaux** | 12d | 2026-04-22 | 2026-05-07 |  |  |
| 41 | 6.1.1 | Coffrage | 3d | 2026-04-22 | 2026-04-24 |  | Coffreurs [400%] |
| 42 | 6.1.2 | Ferraillage | 3d | 2026-04-22 | 2026-04-24 |  | Ferrailleurs [400%] |
| 43 | 6.1.3 | Bétonnage | 2d | 2026-04-27 | 2026-04-28 | 41, 42 | Manœuvres [300%]; Maçons [400%]; Grutier |
| 44 | 6.1.4 | Décoffrage+cure | 7d | 2026-04-29 | 2026-05-07 | 43 | Manœuvres [300%]; Maçons [200%] |
| 46 | 6.2 | **Poutres+Dalle** | 14d | 2026-05-08 | 2026-05-27 | 40 |  |
| 47 | 6.2.1 | Coffrage | 5d | 2026-05-08 | 2026-05-14 |  | Coffreurs [400%] |
| 48 | 6.2.2 | Ferraillage | 5d | 2026-05-08 | 2026-05-14 |  | Ferrailleurs [400%] |
| 49 | 6.2.3 | Bétonnage | 2d | 2026-05-15 | 2026-05-18 | 47, 48 | Maçons [600%]; Manœuvres [300%] |
| 50 | 6.2.4 | Décoffrage+cure | 7d | 2026-05-19 | 2026-05-27 | 49 | Maçons [300%]; Manœuvres [300%] |
| 52 | 6.3 | Cage d’escalier | 3d | 2026-05-28 | 2026-06-01 | 50 | Maçons [200%]; Coffreurs [200%]; Ferrailleurs [300%]; Manœuvres [200%]; Grutier; Grue |
| 55 | 7 | **Structure du 2eme etage** | 29d | 2026-06-02 | 2026-07-10 | 39 | Grutier; Grue |
| 56 | 7.1 | **Poteaux** | 12d | 2026-06-02 | 2026-06-17 |  |  |
| 57 | 7.1.1 | Coffrage | 3d | 2026-06-02 | 2026-06-04 |  | Coffreurs [400%] |
| 58 | 7.1.2 | Ferraillage | 3d | 2026-06-02 | 2026-06-04 |  | Ferrailleurs [400%] |
| 59 | 7.1.3 | Bétonnage | 2d | 2026-06-05 | 2026-06-08 | 57, 58 | Manœuvres [300%]; Maçons [400%]; Grutier |
| 60 | 7.1.4 | Décoffrage+cure | 7d | 2026-06-09 | 2026-06-17 | 59 | Manœuvres [300%]; Maçons [200%] |

| ID | WBS | Task | Duration | Start | Finish | Predecessors | Resources |
| --- | --- | --- | --- | --- | --- | --- | --- |
| 62 | 7.2 | **Poutres+Dalle** | 14d | 2026-06-18 | 2026-07-07 | 56 |  |
| 63 | 7.2.1 | Coffrage | 5d | 2026-06-18 | 2026-06-24 |  | Coffreurs [400%] |
| 64 | 7.2.2 | Ferraillage | 5d | 2026-06-18 | 2026-06-24 |  | Ferrailleurs [400%] |
| 65 | 7.2.3 | Bétonnage | 2d | 2026-06-25 | 2026-06-26 | 64, 63 | Maçons [600%]; Manœuvres [300%] |
| 66 | 7.2.4 | Décoffrage+cure | 7d | 2026-06-29 | 2026-07-07 | 65 | Maçons [300%]; Manœuvres [300%] |
| 68 | 7.3 | Cage d’escalier | 3d | 2026-07-08 | 2026-07-10 | 66 | Maçons [200%]; Coffreurs [200%]; Ferrailleurs [300%]; Manœuvres [200%]; Grutier; Grue |
| 71 | 8 | **Structure du 3eme etage** | 26d | 2026-07-13 | 2026-08-17 | 55 | Grutier; Grue |
| 72 | 8.1 | **Poteaux** | 12d | 2026-07-13 | 2026-07-28 |  |  |
| 73 | 8.1.1 | Coffrage | 3d | 2026-07-13 | 2026-07-15 |  | Coffreurs [400%] |
| 74 | 8.1.2 | Ferraillage | 3d | 2026-07-13 | 2026-07-15 |  | Ferrailleurs [400%] |
| 75 | 8.1.3 | Bétonnage | 2d | 2026-07-16 | 2026-07-17 | 73, 74 | Manœuvres [300%]; Maçons [400%]; Grutier |
| 76 | 8.1.4 | Décoffrage+cure | 7d | 2026-07-20 | 2026-07-28 | 75 | Manœuvres [300%]; Maçons [200%] |
| 78 | 8.2 | **Poutres+Dalle** | 11d | 2026-07-29 | 2026-08-12 | 72 |  |
| 79 | 8.2.1 | Coffrage | 5d | 2026-07-29 | 2026-08-04 |  | Coffreurs [400%] |
| 80 | 8.2.2 | Ferraillage | 5d | 2026-07-29 | 2026-08-04 |  | Ferrailleurs [400%] |
| 81 | 8.2.3 | Bétonnage | 2d | 2026-08-05 | 2026-08-06 | 80, 79 | Maçons [600%]; Manœuvres [300%] |
| 82 | 8.2.4 | Décoffrage+cure | 4d | 2026-08-07 | 2026-08-12 | 81 | Maçons [300%]; Manœuvres [300%] |
| 84 | 8.3 | Cage d’escalier | 3d | 2026-08-13 | 2026-08-17 | 82 | Maçons [200%]; Coffreurs [200%]; Ferrailleurs [300%]; Manœuvres [200%]; Grutier; Grue |
| 87 | 9 | **Structure du 4eme etage** | 26d | 2026-08-18 | 2026-09-22 | 71 | Grutier; Grue |
| 88 | 9.1 | **Poteaux** | 12d | 2026-08-18 | 2026-09-02 |  |  |
| 89 | 9.1.1 | Coffrage | 3d | 2026-08-18 | 2026-08-20 |  | Coffreurs [400%] |
| 90 | 9.1.2 | Ferraillage | 3d | 2026-08-18 | 2026-08-20 |  | Ferrailleurs [400%] |
| 91 | 9.1.3 | Bétonnage | 2d | 2026-08-21 | 2026-08-24 | 89, 90 | Manœuvres [300%]; Maçons [400%]; Grutier |
| 92 | 9.1.4 | Décoffrage+cure | 7d | 2026-08-25 | 2026-09-02 | 91 | Manœuvres [300%]; Maçons [200%] |

| ID | WBS | Task | Duration | Start | Finish | Predecessors | Resources |
| --- | --- | --- | --- | --- | --- | --- | --- |
| 94 | 9.2 | **Poutres+Dalle** | 11d | 2026-09-03 | 2026-09-17 | 88 |  |
| 95 | 9.2.1 | Coffrage | 5d | 2026-09-03 | 2026-09-09 |  | Coffreurs [400%] |
| 96 | 9.2.2 | Ferraillage | 5d | 2026-09-03 | 2026-09-09 |  | Ferrailleurs [400%] |
| 97 | 9.2.3 | Bétonnage | 2d | 2026-09-10 | 2026-09-11 | 96, 95 | Maçons [600%]; Manœuvres [300%] |
| 98 | 9.2.4 | Décoffrage+cure | 4d | 2026-09-14 | 2026-09-17 | 97 | Maçons [300%]; Manœuvres [300%] |
| 100 | 9.3 | Cage d’escalier | 3d | 2026-09-18 | 2026-09-22 | 98 | Maçons [200%]; Coffreurs [200%]; Ferrailleurs [300%]; Manœuvres [200%]; Grutier; Grue |
| 103 | 10 | **Murs extérieurs** | 10.5d | 2026-09-23 | 2026-10-07 | 87 | Grutier; Conducteur; Grue |
| 104 | 10.1 | Murs façade RDC | 7.5d | 2026-09-23 | 2026-10-02 |  | Maçons [200%]; Manœuvres |
| 105 | 10.2 | Murs façade étage 1 | 4.5d | 2026-09-23 | 2026-09-29 |  | Manœuvres [200%]; Maçons [200%] |
| 106 | 10.3 | Murs façade étage 2 | 3d | 2026-09-29 | 2026-10-02 | 105 | Manœuvres [200%]; Maçons [300%] |
| 107 | 10.4 | Murs façade étage 3 | 3d | 2026-10-02 | 2026-10-07 | 104 | Manœuvres [200%]; Maçons [300%] |
| 108 | 10.5 | Murs façade étage 4 | 3d | 2026-10-02 | 2026-10-07 | 106 | Manœuvres [200%]; Maçons [300%] |
| 110 | 11 | **Murs intérieurs** | 14d | 2026-10-07 | 2026-10-27 | 103 | Grutier; Conducteur; Grue |
| 111 | 11.1 | Cloisons RDC | 4d | 2026-10-07 | 2026-10-13 |  | Maçons [300%]; Manœuvres [200%] |
| 112 | 11.2 | Cloisons par étage | 7.5d | 2026-10-07 | 2026-10-16 |  | Maçons [200%]; Manœuvres |
| 113 | 11.3 | Cloisons par étage | 5d | 2026-10-13 | 2026-10-20 | 111 | Maçons [300%]; Manœuvres |
| 114 | 11.4 | Cloisons par étage | 5d | 2026-10-19 | 2026-10-23 | 112 | Maçons [300%]; Manœuvres |
| 115 | 11.5 | Cloisons par étage | 5d | 2026-10-20 | 2026-10-27 | 113 | Maçons [300%]; Manœuvres |
| 117 | 12 | **Désinstallation** | 5d | 2026-10-27 | 2026-11-03 | 110 |  |
| 118 | 12.1 | Nettoyage chantier | 3d | 2026-10-27 | 2026-10-30 |  | Chef de chantier; Manœuvres [300%] |
| 119 | 12.2 | Retrait installations | 2d | 2026-10-30 | 2026-11-03 | 118 | Chef de chantier; Manœuvres [300%]; Maçons |
